# OJL

Schedule from MS Project, 2008-10-06 to 2009-03-03.
蜷榊商螻句､ｧ蟄ｦ

## Calendars

- 標準: Mon-Fri 08:00-12:00, 13:00-17:00; Sat-Sun off.

## Resources

| Resource |
| --- |
| mizuno |
| yanagi |

## Schedule

| ID | WBS | Task | Duration | Start | Finish | Predecessors | Total slack | Free slack | Constraint | Deadline |
| --- | --- | --- | --- | --- | --- | --- | --- | --- | --- | --- |
| 1 | 1 | **TLV phase3** | 107d? | 2008-10-06 | 2009-03-03 |  | 0d |  |  |  |
| 2 | 1.1 | **勉強** | 32d? | 2008-10-06 | 2008-11-18 |  | 30d | 0d |  |  |
| 3 | 1.1.1 | 組込みシステムの勉強 | 16d? | 2008-10-06 | 2008-10-27 |  | 38d |  | finish no earlier than 2008-10-27 |  |
| 4 | 1.1.2 | C#の勉強 | 16d? | 2008-10-28 | 2008-11-18 |  | 22d |  | finish no earlier than 2008-11-18 |  |
| 5 | 1.1.3 | TLVの勉強 | 16d? | 2008-10-28 | 2008-11-18 |  | 22d |  | finish no earlier than 2008-11-18 |  |
| 6 | 1.2 | **単体テスト** | 45d? | 2008-11-19 | 2009-01-20 | 2 | 30d |  |  |  |
| 7 | 1.2.1 | リストアップ | 4d? | 2008-11-19 | 2008-11-24 |  | 28d |  | finish no earlier than 2008-11-24 |  |
| 8 | 1.2.2 | 実施 | 41d? | 2008-11-25 | 2009-01-20 | 7 | 30d |  | start no earlier than 2008-11-25 |  |
| 9 | 1.3 | **システムテスト** | 46d? | 2008-11-26 | 2009-01-28 | 2 | 24d |  |  |  |
| 10 | 1.3.1 | 設計 | 4d? | 2008-11-26 | 2008-12-01 |  | 60d | 36d | finish no earlier than 2008-12-01 |  |
| 11 | 1.3.2 | 実施 | 6d? | 2009-01-21 | 2009-01-28 | 10 | 24d |  | finish no earlier than 2009-01-28 |  |
| 12 | 1.4 | **CPU利用率の表示検討** | 15d | 2009-01-28 | 2009-02-17 |  | 0d |  |  |  |
| 13 | 1.4.1 | 要求理解 | 5d | 2009-01-28 | 2009-02-03 |  | 0d |  | finish no earlier than 2009-02-03 |  |
| 14 | 1.4.2 | ペーパープロトタイピング | 5d | 2009-02-04 | 2009-02-10 | 13 | 0d |  |  |  |
| 15 | 1.4.3 | 仕様書を作る | 5d | 2009-02-11 | 2009-02-17 | 14 | 0d |  |  |  |
| 16 | 1.5 | **CPUごとのタスク表示** | 25d | 2009-01-28 | 2009-03-03 |  | 0d |  |  |  |
| 17 | 1.5.1 | 変換ルールの理解 | 5d | 2009-01-28 | 2009-02-03 |  | 0d |  | start no earlier than 2009-01-28 |  |
| 18 | 1.5.2 | リソースファイルの理解 | 5d | 2009-01-28 | 2009-02-03 |  | 0d |  | start no earlier than 2009-01-28 |  |
| 19 | 1.5.3 | 変換ルールの記述 | 10d | 2009-02-04 | 2009-02-17 | 17, 18 | 0d |  |  |  |
| 20 | 1.5.4 | **表示のテスト** | 20d | 2009-02-04 | 2009-03-03 |  | 0d |  |  |  |
| 21 | 1.5.4.1 | テスト設計 | 5d | 2009-02-04 | 2009-02-10 | 17, 18 | 5d |  | start no earlier than 2009-01-28 |  |
| 22 | 1.5.4.2 | 実施 | 5d | 2009-02-18 | 2009-02-24 | 21, 19 | 0d |  |  |  |
| 23 | 1.5.4.3 | 修正 | 5d | 2009-02-25 | 2009-03-03 | 22 | 0d |  |  |  |
| 24 | 1.6 | **中間報告** | 9d | 2009-02-18 | 2009-03-02 | 12, 19 | 0d |  |  | 2009-03-02 |
| 25 | 1.6.1 | 資料作成 | 5d | 2009-02-18 | 2009-02-24 |  | 0d |  |  |  |
| 26 | 1.6.2 | 発表練習 | 4d | 2009-02-25 | 2009-03-02 | 25 | 0d |  | finish no earlier than 2009-03-02 |  |
